# Stargazer

Schedule from MS Project, 2010-01-06 to 2010-03-31, 4 hours a day, A marks actual dates.
Okanagan College

## Calendars

- Standard: Mon 14:00-16:30; Tue off; Wed 14:30-16:30; Thu 14:30-18:30; Fri-Sun off. Exceptions (off unless hours are given): 2010-03-13 08:00-12:00, 13:00-17:00.

## Resources

| Resource |
| --- |
| Robert |
| Rob |

## Schedule

| ID | WBS | Task | Duration | Start | Finish | Predecessors | Complete | Remaining | Total slack | Free slack | Constraint | Resources | Work | Actual work | Text1 |
| --- | --- | --- | --- | --- | --- | --- | --- | --- | --- | --- | --- | --- | --- | --- | --- |
| 1 | 1 | **Iteration 8: Image Capturing: (Total: units)** | 27.62d | 2010-01-06 14:30 A | 2010-03-31 15:00 |  | 8% | 25.39d | 0d |  |  | Rob | 136h | 2h | 16 |
| 2 | 1.1 | **Business Modeling: (Total: unit)** | 0.06d | 2010-03-13 08:00 A | 2010-03-13 08:15 A |  | 100% |  |  |  |  |  | 0.25h | 0.25h | 16 |
| 3 | 1.1.1 | Update vision to coincide with changes | 15min | 2010-03-13 08:00 A | 2010-03-13 08:15 A |  | 100% |  |  |  | start no earlier than 2010-03-12 08:00 | Rob | 0.25h | 0.25h |  |
| 4 | 1.2 | **Implementation: (Total: units)** | 25.06d | 2010-01-06 14:30 | 2010-03-22 15:15 |  |  |  | 2.56d |  |  |  | 13.75h |  | 16 |
| 5 | 1.2.1 | **Web system** | 0.75d | 2010-01-06 14:30 | 2010-01-07 15:30 |  |  |  | 26.88d |  |  |  | 4h |  | 16 |
| 6 | 1.2.1.1 | Create batch file to allow images to be POST'ed to the web server | 3h | 2010-01-06 14:30 | 2010-01-07 15:30 |  |  |  | 26.88d |  |  | Rob | 3h |  | 12 |
| 7 | 1.2.1.2 | Make changes to triggers and batch files to handle extra camera-related inputs to telescope-controlling application | 1h | 2010-01-06 14:30 | 2010-01-06 15:30 |  |  |  | 27.38d |  |  | Rob | 1h |  |  |
| 8 | 1.2.2 | **Telescope-Controlling Application** | 24.88d | 2010-01-06 15:15 | 2010-03-22 15:15 |  |  |  | 2.56d |  |  |  | 9.75h |  |  |
| 9 | 1.2.2.1 | **A Test Program** | 1.88d | 2010-01-06 15:15 | 2010-01-11 16:15 |  |  |  | 25.56d |  |  |  | 8.5h |  | 16 |
| 10 | 1.2.2.1.1 | Create test program to communicate with the camera and take a picture | 4h | 2010-01-06 15:15 | 2010-01-07 17:15 | 31 |  |  | 25.56d | 0d |  | Robert | 4h |  | 16 |
| 11 | 1.2.2.1.2 | Test getting and setting parameters of the camera | 1h | 2010-01-07 17:15 | 2010-01-07 18:15 | 10, 31 |  |  | 26.19d |  |  | Robert | 1h |  |  |
| 12 | 1.2.2.1.3 | Allow input for selected parameters | 1h | 2010-01-07 17:15 | 2010-01-07 18:15 | 10 |  |  | 25.56d | 0d |  | Robert | 1h |  |  |
| 13 | 1.2.2.1.4 | Set parameters based on inputs | 1.5h | 2010-01-07 18:15 | 2010-01-11 15:15 | 10, 12, 31 |  |  | 25.56d | 0d |  | Robert | 1.5h |  |  |
| 14 | 1.2.2.1.5 | Add error checking | 1h | 2010-01-11 15:15 | 2010-01-11 16:15 | 10, 12, 13, 31 |  |  | 25.56d |  |  | Robert | 1h |  |  |
| 15 | 1.2.2.2 | **Integration with Telescope Controlling Application** | 0.31d | 2010-03-22 14:00 | 2010-03-22 15:15 |  |  |  | 2.56d |  |  |  | 1.25h |  | 16 |
| 16 | 1.2.2.2.1 | Migrate source code to telescope control app | 0.25h | 2010-03-22 14:00 | 2010-03-22 14:15 |  |  |  | 2.56d | 0d | start no earlier than 2010-03-19 08:00 | Robert | 0.25h |  |  |
| 17 | 1.2.2.2.2 | Clean up camera code and convert it to a method | 0.5h | 2010-03-22 14:15 | 2010-03-22 14:45 | 16 |  |  | 2.56d | 0d |  | Robert | 0.5h |  |  |
| 18 | 1.2.2.2.3 | Modify main method to pass camera settings to camera method | 0.5h | 2010-03-22 14:45 | 2010-03-22 15:15 | 17 |  |  | 2.56d |  |  | Robert | 0.5h |  |  |
| 19 | 1.3 | **Testing: (Total: units)** | 10.12d | 2010-03-04 14:30 A | 2010-03-31 15:00 |  | 26% | 7.48d | 0d |  |  |  | 5.75h | 1.5h | 16 |
| 20 | 1.3.1 | Draft acceptance test | 1h | 2010-03-04 14:30 | 2010-03-04 15:30 |  |  |  | 9.88d |  | start no earlier than 2010-03-04 08:00 | Robert | 1h |  |  |
| 21 | 1.3.2 | **Web system** | 0.75d | 2010-03-26 08:00 A | 2010-03-31 15:00 |  | 50% | 0.38d | 0d |  |  |  | 3h | 1.5h | 16 |
| 22 | 1.3.2.1 | Fix issue with testing environment | 3h | 2010-03-26 08:00 A | 2010-03-31 15:00 |  | 50% | 1.5h | 0d |  |  | Rob | 3h | 1.5h | 12 |
| 23 | 1.3.3 | **Telescope-Controlling Application** | 0.31d | 2010-03-29 14:00 | 2010-03-29 15:15 |  |  |  | 0.44d |  |  |  | 1.75h |  | 16 |
| 24 | 1.3.3.1 | Create camera test method | 0.25h | 2010-03-29 14:00 | 2010-03-29 14:15 |  |  |  | 0.44d | 0d | start no earlier than 2010-03-29 08:00 | Robert | 0.25h |  |  |
| 25 | 1.3.3.2 | Accept inputs from telescope control app | 0.25h | 2010-03-29 14:15 | 2010-03-29 14:30 | 24 |  |  | 0.62d |  |  | Robert | 0.25h |  |  |
| 26 | 1.3.3.3 | Output a test image | 0.25h | 2010-03-29 14:15 | 2010-03-29 14:30 | 24 |  |  | 0.62d |  |  | Robert | 0.25h |  |  |
| 27 | 1.3.3.4 | Simulate camera commands | 1h | 2010-03-29 14:15 | 2010-03-29 15:15 | 24 |  |  | 0.44d |  |  | Robert | 1h |  |  |

Notes:
- 9: Create test program to handle image taking with specific parameters

| ID | WBS | Task | Type | Duration | Start | Finish | Predecessors | Complete | Remaining | Total slack | Free slack | Constraint | Resources | Work | Actual work | Text1 |
| --- | --- | --- | --- | --- | --- | --- | --- | --- | --- | --- | --- | --- | --- | --- | --- | --- |
| 28 | 1.4 | **Analysis and Design: (Total: units)** |  | 27.5d | 2010-01-06 14:30 A | 2010-03-31 08:00 |  |  | 27.5d | 0.12d |  |  |  | 5.5h |  | 16 |
| 29 | 1.4.1 | Create detailed plan for next iteration |  | 2h | 2010-01-06 14:30 | 2010-01-06 16:30 |  |  |  | 27.12d |  |  | Rob | 2h |  |  |
| 30 | 1.4.2 | Create PowerPoint for final presentation |  | 2h | 2010-03-25 14:30 | 2010-03-25 16:30 |  |  |  | 1.25d |  | start no earlier than 2010-03-25 08:00 | Rob | 2h |  |  |
| 31 | 1.4.3 | Read camera documentation |  | 0.75h | 2010-01-06 14:30 | 2010-01-06 15:15 |  |  |  | 25.56d | 0d |  | Robert; Rob | 1.5h |  |  |
| 32 | 1.4.4 | All documentation finished | milestone | 0d | 2010-03-31 08:00 A | 2010-03-31 08:00 A | 20 | 100% |  |  |  | start no earlier than 2010-03-13 08:00 | Rob; Robert |  |  |  |
| 33 | 1.5 | **Deployment: (Total: unit)** |  | 0.06d | 2010-03-13 08:00 A | 2010-03-13 08:15 A |  | 100% |  |  |  |  |  | 0.25h | 0.25h | 16 |
| 34 | 1.5.1 | Deploy latest versions of web application to production |  | 15min | 2010-03-13 08:00 A | 2010-03-13 08:15 A |  | 100% |  |  |  | start no earlier than 2010-03-12 08:00 | Rob | 0.25h | 0.25h |  |
| 35 | 1.6 | Release #8: Image Capturing | milestone | 0d | 2010-03-13 08:00 A | 2010-03-13 08:00 A | 5 | 100% |  |  |  | start no earlier than 2010-03-13 08:00 | Rob; Robert |  |  |  |
